# Proyect1

Schedule from MS Project, 2011-10-31 to 2011-11-10.

## Calendars

- Estándar: Mon-Fri 09:00-13:00, 15:00-19:00; Sat-Sun off.

## Resources

| Resource |
| --- |
| Sandra |
| William |
| Erik |
| Mauricio |
| Carlos |
| David |

## Schedule

| ID | WBS | Task | Duration | Start | Finish | Predecessors | Total slack | Free slack | Resources | Work |
| --- | --- | --- | --- | --- | --- | --- | --- | --- | --- | --- |
| 1 | 1 | **Merket place proyecto 3 ciclo 3** | 8.31d? | 2011-10-31 09:00 | 2011-11-10 11:30 |  | 0d |  |  | 433.5h |
| 2 | 1.1 | **Estabilización** | 0.5d? | 2011-10-31 09:00 | 2011-10-31 13:00 |  | 0d |  |  | 8h |
| 3 | 1.1.1 | Actualizar repositorio (BPEL - CRM) | 0.5d? | 2011-10-31 09:00 | 2011-10-31 13:00 |  | 0d |  | Sandra | 4h |
| 4 | 1.1.2 | Actualizar repositorio LEG | 0.5d? | 2011-10-31 09:00 | 2011-10-31 13:00 |  | 0d |  | Erik | 4h |
| 5 | 1.2 | [SEG] Reunión de inicio ciclo 3 | 0.5d? | 2011-10-31 09:00 | 2011-10-31 13:00 |  | 7.81d |  | Carlos; David; Erik; Sandra; William; Mauricio | 24h |
| 6 | 1.3 | **Parte 1** | 2.56d? | 2011-10-31 15:00 | 2011-11-03 09:30 | 2 | 0d |  |  | 143h |
| 7 | 1.3.1 | [DOC] Estrategía | 0.5d? | 2011-10-31 15:00 | 2011-10-31 19:00 |  | 2.06d |  | David | 4h |
| 8 | 1.3.2 | [DOC] Alcance | 0.5d? | 2011-10-31 15:00 | 2011-10-31 19:00 |  | 2.06d |  | Sandra | 4h |
| 9 | 1.3.3 | [DOC] Estimación | 0.5d? | 2011-10-31 15:00 | 2011-10-31 19:00 |  | 2.06d |  | Carlos | 4h |
| 10 | 1.3.4 | [DOC] Plan de proyecto | 0.38d? | 2011-10-31 15:00 | 2011-10-31 18:00 |  | 2.19d |  | Carlos; William | 6h |
| 11 | 1.3.5 | [DOC] Plan de calidad | 0.5d? | 2011-10-31 15:00 | 2011-10-31 19:00 |  | 2.06d |  | Carlos | 4h |
| 12 | 1.3.6 | [DOC] Plan de mejoramiento detallado | 0.5d? | 2011-10-31 15:00 | 2011-10-31 19:00 |  | 2.06d |  | William | 4h |
| 13 | 1.3.7 | [DOC] Plan de riesgos | 0.5d? | 2011-10-31 15:00 | 2011-10-31 19:00 |  | 2.06d |  | Mauricio | 4h |
| 14 | 1.3.8 | [CRM] Consultar Cliente | 0.38d? | 2011-10-31 15:00 | 2011-10-31 18:00 |  | 0d |  | Sandra | 3h |
| 15 | 1.3.9 | [OSB] Consultar Cliente | 0.31d? | 2011-10-31 18:00 | 2011-11-01 10:30 | 14 | 1.5d | 0d | Sandra | 2.5h |
| 16 | 1.3.10 | [BPEL] Consultar Cliente | 0.38d? | 2011-11-01 10:30 | 2011-11-01 15:30 | 15 | 1.5d |  | William | 3h |
| 17 | 1.3.11 | [CRM] Crear cliente | 0.38d? | 2011-10-31 18:00 | 2011-11-01 11:00 | 14 | 0d |  | Sandra | 3h |
| 18 | 1.3.12 | [OSB] Crear Cliente | 0.31d? | 2011-11-01 11:00 | 2011-11-01 15:30 | 17 | 1.12d | 0d | Sandra | 2.5h |
| 19 | 1.3.13 | [BPEL] Crear cliente | 0.38d? | 2011-11-01 15:30 | 2011-11-01 18:30 | 18 | 1.12d |  | William | 3h |
| 20 | 1.3.14 | [CRM] Crear contactos | 0.38d? | 2011-11-01 11:00 | 2011-11-01 16:00 | 17 | 0d |  | Sandra | 3h |
| 21 | 1.3.15 | [OSB] Crear contactos | 0.31d? | 2011-11-01 16:00 | 2011-11-01 18:30 | 20 | 0.75d | 0d | Sandra | 2.5h |
| 22 | 1.3.16 | [BPEL] Crear contactos | 0.38d? | 2011-11-01 18:30 | 2011-11-02 11:30 | 21 | 0.75d |  | William | 3h |
| 23 | 1.3.17 | [CRM] Asignar los productos CRM | 0.38d? | 2011-11-01 16:00 | 2011-11-01 19:00 | 20 | 0d |  | Sandra | 3h |
| 24 | 1.3.18 | [OSB] Asignar los productos CRM | 0.31d? | 2011-11-02 09:00 | 2011-11-02 11:30 | 23 | 0.25d | 0d | Sandra | 2.5h |
| 25 | 1.3.19 | [BPEL] Asignar los productos CRM | 0.5d? | 2011-11-02 11:30 | 2011-11-02 17:30 | 24 | 0.25d |  | William | 4h |
| 26 | 1.3.20 | [CRM] radicar solicitud CRM | 0.38d? | 2011-11-02 09:00 | 2011-11-02 12:00 | 23 | 0d |  | Sandra | 3h |
| 27 | 1.3.21 | [OSB] radicar solicitud CRM | 0.31d? | 2011-11-02 12:00 | 2011-11-02 16:30 | 26 | 0d |  | Sandra | 2.5h |
| 28 | 1.3.22 | [BPEL] radicar solicitud CRM | 0.38d? | 2011-11-02 16:30 | 2011-11-03 09:30 | 27 | 0d |  | William | 3h |

| ID | WBS | Task | Duration | Start | Finish | Predecessors | Total slack | Free slack | Resources | Work |
| --- | --- | --- | --- | --- | --- | --- | --- | --- | --- | --- |
| 29 | 1.3.23 | **Verificación crediticia (Risk Qualification)** | 0.5d? | 2011-10-31 15:00 | 2011-10-31 19:00 |  | 1.25d | 0d |  | 12h |
| 30 | 1.3.23.1 | [LEG] Consultar Confecamaras | 0.25d? | 2011-10-31 15:00 | 2011-10-31 17:00 |  | 1.5d |  | Erik | 2h |
| 31 | 1.3.23.2 | [LEG] Consultar Datacredito | 0.25d? | 2011-10-31 15:00 | 2011-10-31 17:00 |  | 1.5d |  | Erik | 2h |
| 32 | 1.3.23.3 | [LEG] Consultar Antilavado | 0.25d? | 2011-10-31 15:00 | 2011-10-31 17:00 |  | 1.5d |  | Erik | 2h |
| 33 | 1.3.23.4 | [LEG] Consultar Lista Clinton | 0.25d? | 2011-10-31 15:00 | 2011-10-31 17:00 |  | 1.5d |  | Erik | 2h |
| 34 | 1.3.23.5 | [LEG] Crear Verificación Internacional | 0.5d? | 2011-10-31 15:00 | 2011-10-31 19:00 |  | 1.25d |  | Erik | 4h |
| 35 | 1.3.24 | [OSB] Verificación crediticia | 0.31d? | 2011-11-01 09:00 | 2011-11-01 11:30 | 29 | 1.25d | 0d | Mauricio | 2.5h |
| 36 | 1.3.25 | [BPEL] Verificación crediticia | 0.5d? | 2011-11-01 11:30 | 2011-11-01 17:30 | 35 | 1.25d |  | William | 4h |
| 37 | 1.3.26 | [PORTAL] Vista contactos | 1d? | 2011-10-31 15:00 | 2011-11-01 13:00 |  | 1.56d |  | Carlos | 8h |
| 38 | 1.3.27 | [PORTAL] Vista producto | 1d? | 2011-10-31 15:00 | 2011-11-01 13:00 |  | 1.56d |  | Carlos | 8h |
| 39 | 1.3.28 | [DOC] Prueba de aceptación | 0.25d? | 2011-10-31 15:00 | 2011-10-31 17:00 |  | 2.31d |  | Carlos | 2h |
| 40 | 1.3.29 | [SEG] Reunión de seguimiento | 0.5d? | 2011-10-31 15:00 | 2011-10-31 19:00 |  | 2.06d |  | Carlos; David; Erik; Sandra; William; Mauricio | 24h |
| 41 | 1.3.30 | [DOC] Seguimiento plan | 0.38d? | 2011-10-31 15:00 | 2011-10-31 18:00 |  | 2.19d |  | Carlos | 3h |
| 42 | 1.3.31 | [DOC] Seguimiento riesgos | 0.38d? | 2011-10-31 15:00 | 2011-10-31 18:00 |  | 2.19d |  | Mauricio | 3h |
| 43 | 1.3.32 | [DOC] Seguimiento de calidad | 0.38d? | 2011-10-31 15:00 | 2011-10-31 18:00 |  | 2.19d |  | Erik | 3h |
| 44 | 1.4 | **Parte 2** | 3.06d? | 2011-11-03 09:30 | 2011-11-08 10:00 | 6 | 0d |  |  | 122h |
| 45 | 1.4.1 | [CRM] Actualizar estado solicitud | 0.38d? | 2011-11-03 09:30 | 2011-11-03 12:30 |  | 0d |  | Sandra | 3h |
| 46 | 1.4.2 | [OSB] Actualizar estado solicitud | 0.31d? | 2011-11-03 12:30 | 2011-11-03 17:00 | 45 | 1.88d | 0d | Mauricio | 2.5h |
| 47 | 1.4.3 | [BPEL] Actualizar estado solicitud | 0.5d? | 2011-11-03 17:00 | 2011-11-04 11:00 | 46 | 1.88d |  | William | 4h |
| 48 | 1.4.4 | [CRM] Activar cliente | 0.38d? | 2011-11-03 12:30 | 2011-11-03 17:30 | 45 | 0d |  | Sandra | 3h |
| 49 | 1.4.5 | [OSB] Activar cliente | 0.31d? | 2011-11-03 17:30 | 2011-11-04 10:00 | 48 | 1.5d | 0d | Mauricio | 2.5h |
| 50 | 1.4.6 | [BPEL] Activar cliente | 0.5d? | 2011-11-04 10:00 | 2011-11-04 16:00 | 49 | 1.5d |  | William | 4h |
| 51 | 1.4.7 | [CRM] consultar contacto | 0.38d? | 2011-11-03 17:30 | 2011-11-04 10:30 | 48 | 0d |  | Sandra | 3h |
| 52 | 1.4.8 | [OSB] consultar contacto | 0.31d? | 2011-11-04 10:30 | 2011-11-04 13:00 | 51 | 1.12d | 0d | Mauricio | 2.5h |
| 53 | 1.4.9 | [BPEL] consultar contacto | 0.5d? | 2011-11-04 15:00 | 2011-11-04 19:00 | 52 | 1.12d |  | William | 4h |
| 54 | 1.4.10 | [CRM] activar contacto | 0.38d? | 2011-11-04 10:30 | 2011-11-04 15:30 | 51 | 0d |  | Sandra | 3h |
| 55 | 1.4.11 | [OSB] activar contacto | 0.31d? | 2011-11-04 15:30 | 2011-11-04 18:00 | 54 | 0.75d | 0d | Mauricio | 2.5h |
| 56 | 1.4.12 | [BPEL] activar contacto | 0.5d? | 2011-11-04 18:00 | 2011-11-07 12:00 | 55 | 0.75d |  | William | 4h |
| 57 | 1.4.13 | [CRM] consultar Producto | 0.38d? | 2011-11-04 15:30 | 2011-11-04 18:30 | 54 | 0d |  | Sandra | 3h |
| 58 | 1.4.14 | [OSB] consultar Producto | 0.31d? | 2011-11-04 18:30 | 2011-11-07 11:00 | 57 | 0.38d | 0d | Mauricio | 2.5h |
| 59 | 1.4.15 | [BPEL] consultar Producto | 0.5d? | 2011-11-07 11:00 | 2011-11-07 17:00 | 58 | 0.38d |  | William | 4h |
| 60 | 1.4.16 | [CRM] activar producto en el CRM | 0.38d? | 2011-11-04 18:30 | 2011-11-07 11:30 | 57 | 0d |  | Sandra | 3h |
| 61 | 1.4.17 | [OSB] activar producto en el CRM | 0.31d? | 2011-11-07 11:30 | 2011-11-07 16:00 | 60 | 0d |  | Mauricio | 2.5h |
| 62 | 1.4.18 | [BPEL] activar producto en el CRM | 0.5d? | 2011-11-07 16:00 | 2011-11-08 10:00 | 61 | 0d |  | William | 4h |

| ID | WBS | Task | Duration | Start | Finish | Predecessors | Total slack | Free slack | Resources | Work |
| --- | --- | --- | --- | --- | --- | --- | --- | --- | --- | --- |
| 63 | 1.4.19 | **Gestión de facturación (Billing chargers)** | 1.06d? | 2011-11-03 09:30 | 2011-11-04 10:00 |  | 2d |  |  | 8.5h |
| 64 | 1.4.19.1 | [LEG] Crear cuenta de facturación | 0.25d? | 2011-11-03 09:30 | 2011-11-03 11:30 |  | 2d | 0d | Erik | 2h |
| 65 | 1.4.19.2 | [OSB] Crear cuenta de facturación | 0.31d? | 2011-11-03 11:30 | 2011-11-03 16:00 | 64 | 2d | 0d | Mauricio | 2.5h |
| 66 | 1.4.19.3 | [BPEL] Crear cuenta de facturación | 0.5d? | 2011-11-03 16:00 | 2011-11-04 10:00 | 65 | 2d |  | William | 4h |
| 67 | 1.4.20 | [BPEL] Gestión Correo electrónico | 0.38d? | 2011-11-03 09:30 | 2011-11-03 12:30 |  | 2.69d |  | William | 3h |
| 68 | 1.4.21 | **Gestión de usuario (LDAP)** | 1.06d? | 2011-11-03 09:30 | 2011-11-04 10:00 |  | 2d |  |  | 8.5h |
| 69 | 1.4.21.1 | [LEG] Crear Usuario | 0.25d? | 2011-11-03 09:30 | 2011-11-03 11:30 |  | 2d | 0d | Erik | 2h |
| 70 | 1.4.21.2 | [OSB] Crear Usuario | 0.31d? | 2011-11-03 11:30 | 2011-11-03 16:00 | 69 | 2d | 0d | Mauricio | 2.5h |
| 71 | 1.4.21.3 | [BPEL] Crear Usuario | 0.5d? | 2011-11-03 16:00 | 2011-11-04 10:00 | 70 | 2d |  | William | 4h |
| 72 | 1.4.22 | [PORTAL] Vista registro de entidad | 1.25d? | 2011-11-03 09:30 | 2011-11-04 11:30 |  | 1.81d |  | Carlos | 10h |
| 73 | 1.4.23 | [DOC] Prueba de aceptación | 0.25d? | 2011-11-03 09:30 | 2011-11-03 11:30 |  | 2.81d |  | Carlos | 2h |
| 74 | 1.4.24 | [SEG] Reunión de seguimiento | 0.5d? | 2011-11-03 09:30 | 2011-11-03 15:30 |  | 2.56d |  | Carlos; David; Erik; Sandra; William; Mauricio | 24h |
| 75 | 1.4.25 | [DOC] Seguimiento plan | 0.38d? | 2011-11-03 09:30 | 2011-11-03 12:30 |  | 2.69d |  | Carlos | 3h |
| 76 | 1.4.26 | [DOC] Seguimiento riesgos | 0.38d? | 2011-11-03 09:30 | 2011-11-03 12:30 |  | 2.69d |  | Mauricio | 3h |
| 77 | 1.4.27 | [DOC] Seguimiento de calidad | 0.38d? | 2011-11-03 09:30 | 2011-11-03 12:30 |  | 2.69d |  | Erik | 3h |
| 78 | 1.5 | **Parte 3** | 2.19d? | 2011-11-08 10:00 | 2011-11-10 11:30 | 44 | 0d |  |  | 136.5h |
| 79 | 1.5.1 | [CRM] Actualizar cliente | 0.38d? | 2011-11-08 10:00 | 2011-11-08 13:00 |  | 0d |  | Sandra | 3h |
| 80 | 1.5.2 | [OSB] Actualizar cliente | 0.31d? | 2011-11-08 15:00 | 2011-11-08 17:30 | 79 | 1d | 0d | Mauricio | 2.5h |
| 81 | 1.5.3 | [BPEL] Actualizar cliente | 0.5d? | 2011-11-08 17:30 | 2011-11-09 11:30 | 80 | 1d |  | William | 4h |
| 82 | 1.5.4 | [CRM] Consultar Contactos | 0.38d? | 2011-11-08 15:00 | 2011-11-08 18:00 | 79 | 0d |  | Sandra | 3h |
| 83 | 1.5.5 | [OSB] Consultar Contactos | 0.31d? | 2011-11-08 18:00 | 2011-11-09 10:30 | 82 | 0.75d | 0d | Mauricio | 2.5h |
| 84 | 1.5.6 | [BPEL] Consultar Contactos | 0.38d? | 2011-11-09 10:30 | 2011-11-09 15:30 | 83 | 0.75d |  | William | 3h |
| 85 | 1.5.7 | [CRM] Actualizar Contacto | 0.38d? | 2011-11-08 18:00 | 2011-11-09 11:00 | 82 | 0d |  | Sandra | 3h |
| 86 | 1.5.8 | [OSB] Actualizar Contacto | 0.31d? | 2011-11-09 11:00 | 2011-11-09 15:30 | 85 | 0.38d | 0d | Mauricio | 2.5h |
| 87 | 1.5.9 | [BPEL] Actualizar Contacto | 0.38d? | 2011-11-09 15:30 | 2011-11-09 18:30 | 86 | 0.38d |  | William | 3h |
| 88 | 1.5.10 | [CRM] Actualizar Producto | 0.38d? | 2011-11-09 11:00 | 2011-11-09 16:00 | 85 | 0d |  | Sandra | 3h |
| 89 | 1.5.11 | [OSB] Actualizar Producto | 0.31d? | 2011-11-09 16:00 | 2011-11-09 18:30 | 88 | 0d |  | Mauricio | 2.5h |
| 90 | 1.5.12 | [BPEL] Actualizar Producto | 0.38d? | 2011-11-09 18:30 | 2011-11-10 11:30 | 89 | 0d |  | William | 3h |
| 91 | 1.5.13 | [LEG] Actualizar cliente PO | 0.25d? | 2011-11-08 10:00 | 2011-11-08 12:00 |  | 0.75d | 0d | Erik | 2h |
| 92 | 1.5.14 | [OSB] Actualizar cliente PO | 0.31d? | 2011-11-08 12:00 | 2011-11-08 16:30 | 91 | 1.12d | 0d | Mauricio | 2.5h |
| 93 | 1.5.15 | [BPEL] Actualizar cliente PO | 0.5d? | 2011-11-08 16:30 | 2011-11-09 10:30 | 92 | 1.12d |  | William | 4h |
| 94 | 1.5.16 | [LEG] Actualizar cliente Transact | 0.25d? | 2011-11-08 12:00 | 2011-11-08 16:00 | 91 | 0.75d | 0d | Erik | 2h |
| 95 | 1.5.17 | [OSB] Actualizar cliente Transact | 0.31d? | 2011-11-08 16:00 | 2011-11-08 18:30 | 94 | 0.88d | 0d | Mauricio | 2.5h |
| 96 | 1.5.18 | [BPEL] Actualizar cliente Transact | 0.5d? | 2011-11-08 18:30 | 2011-11-09 12:30 | 95 | 0.88d |  | William | 4h |
| 97 | 1.5.19 | [LEG] Actualizar cliente LDAP | 0.25d? | 2011-11-08 16:00 | 2011-11-08 18:00 | 94 | 0.75d | 0d | Erik | 2h |
| 98 | 1.5.20 | [OSB] Actualizar cliente LDAP | 0.38d? | 2011-11-08 18:00 | 2011-11-09 11:00 | 97 | 0.75d | 0d | Mauricio | 3h |
| 99 | 1.5.21 | [BPEL] Actualizar cliente LDAP | 0.31d? | 2011-11-09 11:00 | 2011-11-09 15:30 | 98 | 0.75d |  | William | 2.5h |
| 100 | 1.5.22 | [PORTAL] Vista edición de entidad | 1.25d? | 2011-11-08 10:00 | 2011-11-09 12:00 |  | 0.94d |  | Carlos | 10h |
| 101 | 1.5.23 | [DOC] Prueba de aceptación | 0.25d? | 2011-11-08 10:00 | 2011-11-08 12:00 |  | 1.94d |  | Carlos | 2h |
| 102 | 1.5.24 | [SEG] Reunión de seguimiento | 0.5d? | 2011-11-08 10:00 | 2011-11-08 16:00 |  | 1.69d |  | Carlos; David; Erik; Sandra; William; Mauricio | 24h |
| 103 | 1.5.25 | [DOC] Seguimiento plan | 0.38d? | 2011-11-08 10:00 | 2011-11-08 13:00 |  | 1.81d |  | Carlos | 3h |
| 104 | 1.5.26 | [DOC] Seguimiento riesgos | 0.38d? | 2011-11-08 10:00 | 2011-11-08 13:00 |  | 1.81d |  | Mauricio | 3h |
| 105 | 1.5.27 | [DOC] Seguimiento de calidad | 0.38d? | 2011-11-08 10:00 | 2011-11-08 13:00 |  | 1.81d |  | Erik | 3h |
| 106 | 1.5.28 | [PRO] Catalogo Proceso | 1d? | 2011-11-08 10:00 | 2011-11-09 10:00 |  | 1.19d |  | William | 8h |
| 107 | 1.5.29 | [PRO] Proceso en BPMN | 0.5d? | 2011-11-08 10:00 | 2011-11-08 16:00 |  | 1.69d |  | William | 4h |
| 108 | 1.5.30 | [PRO] Diagrama de navegación | 0.5d? | 2011-11-08 10:00 | 2011-11-08 16:00 |  | 1.69d |  | Carlos | 4h |
| 109 | 1.5.31 | [PRO] Diagrama entidad relación | 0.5d? | 2011-11-08 10:00 | 2011-11-08 16:00 |  | 1.69d |  | Erik | 4h |
| 110 | 1.5.32 | [PRO] Portafolio de servicios Legado | 0.5d? | 2011-11-08 10:00 | 2011-11-08 16:00 |  | 1.69d |  | Erik | 4h |
| 111 | 1.5.33 | [PRO] Portafolio de servicios OSB Proxy | 0.5d? | 2011-11-08 10:00 | 2011-11-08 16:00 |  | 1.69d |  | Mauricio | 4h |
| 112 | 1.5.34 | [PRO] Portafolio de servicios CRM | 0.5d? | 2011-11-08 10:00 | 2011-11-08 16:00 |  | 1.69d |  | Sandra | 4h |
